# Kagisho Connect / Phase 2 complete / Final submission 02 November 2026

How a schedule from MS Project XML changed from version to version. A marks actual dates.

## Version 1 (data date 2026-10-13, saved 2026-10-31, file Kagisho_MS_Project_Plan.xml)

| ID | WBS | Task | Duration | Start | Finish | Predecessors | Complete | Constraint |
| --- | --- | --- | --- | --- | --- | --- | --- | --- |
| 1 | 1 | **Phase 1 / Requirements and feasibility - complete** | 10d | 2026-08-18 A | 2026-08-31 A |  | 100% |  |
| 2 |  | Group kick-off and role allocation | 1d | 2026-08-18 A | 2026-08-18 A |  | 100% | start no earlier than 2026-08-18 |
| 3 |  | Select and document school communication project scope | 1d | 2026-08-18 A | 2026-08-18 A | 2SS | 100% | start no earlier than 2026-08-18 |
| 4 |  | Identify school stakeholders and arrange engagement | 1d | 2026-08-19 A | 2026-08-19 A | 3 | 100% | start no earlier than 2026-08-19 |
| 5 |  | Plan stakeholder interview and current-process evidence | 1d | 2026-08-20 A | 2026-08-20 A | 4 | 100% | start no earlier than 2026-08-20 |
| 6 |  | Prepare school communication problem analysis | 2d | 2026-08-21 A | 2026-08-24 A | 5 | 100% | start no earlier than 2026-08-21 |
| 7 |  | Draft Kagisho SRS introduction, scope and objectives | 2d | 2026-08-24 A | 2026-08-25 A | 6SS+1d | 100% | start no earlier than 2026-08-24 |
| 8 |  | Define functional requirements and measurable acceptance | 2d | 2026-08-25 A | 2026-08-26 A | 7SS+1d | 100% | start no earlier than 2026-08-25 |
| 9 |  | Define Flutter, ASP.NET and Supabase integration requirements | 1d | 2026-08-26 A | 2026-08-26 A | 8SS+1d | 100% | start no earlier than 2026-08-26 |
| 10 |  | Assess technical, operational, economic and other feasibility | 2d | 2026-08-26 A | 2026-08-27 A | 9SS | 100% | start no earlier than 2026-08-26 |
| 11 |  | Prepare risk register and mitigation owners | 2d | 2026-08-27 A | 2026-08-28 A | 10SS+1d | 100% | start no earlier than 2026-08-27 |
| 12 |  | Resolve scope conflicts and update requirements change log | 1d | 2026-08-28 A | 2026-08-28 A | 11SS+1d | 100% | start no earlier than 2026-08-28 |
| 13 |  | Set up GitHub repository and evidence structure | 1d | 2026-08-28 A | 2026-08-28 A | 12SS | 100% | start no earlier than 2026-08-28 |
| 14 |  | Update Microsoft Project and contribution tracker | 1d | 2026-08-28 A | 2026-08-28 A | 13SS | 100% | start no earlier than 2026-08-28 |
| 15 |  | Compile stakeholder requirement-confirmation evidence | 1d | 2026-08-31 A | 2026-08-31 A | 12 | 100% | start no earlier than 2026-08-31 |
| 16 |  | Compile and review Phase 1 submission pack | 1d | 2026-08-31 A | 2026-08-31 A | 14, 15SS, 10, 11, 12, 13 | 100% | start no earlier than 2026-08-31 |
| 17 |  | Milestone: Phase 1 planned submission | 0d | 2026-08-31 A | 2026-08-31 A | 16 | 100% | start no earlier than 2026-08-31 |
| 18 | 2 | **Phase 2 / Design and second submission - complete** | 31d | 2026-09-01 A | 2026-10-13 A |  | 100% |  |
| 19 |  | Review scope, feedback and diagram inconsistencies | 2d | 2026-09-01 A | 2026-09-02 A | 17 | 100% | start no earlier than 2026-09-01 |
| 20 |  | Prepare use-case diagram and actor permissions | 2d | 2026-09-03 A | 2026-09-04 A | 19 | 100% | start no earlier than 2026-09-03 |
| 21 |  | Design Flutter sequence: authenticate, view notice and document | 2d | 2026-09-07 A | 2026-09-08 A | 20 | 100% | start no earlier than 2026-09-07 |
| 22 |  | Design ASP.NET publishing sequence | 2d | 2026-09-07 A | 2026-09-08 A | 20 | 100% | start no earlier than 2026-09-07 |
| 23 |  | Refine ERD and database/storage schema | 2d | 2026-09-08 A | 2026-09-09 A | 20 | 100% | start no earlier than 2026-09-08 |
| 24 |  | Prepare Flutter parent wireframes and navigation | 2d | 2026-09-09 A | 2026-09-10 A | 21 | 100% | start no earlier than 2026-09-09 |
| 25 |  | Prepare ASP.NET staff portal wireframes | 2d | 2026-09-09 A | 2026-09-10 A | 21 | 100% | start no earlier than 2026-09-09 |
| 26 |  | Prepare system architecture and integration diagram | 2d | 2026-09-03 A | 2026-09-04 A | 19 | 100% | start no earlier than 2026-09-03 |
| 27 |  | Review and approve complete system design pack | 1d | 2026-09-11 A | 2026-09-11 A | 23, 24, 25, 26, 22 | 100% | start no earlier than 2026-09-11 |
| 28 |  | Milestone: Design and diagram pack approved | 0d | 2026-09-11 A | 2026-09-11 A | 27 | 100% | start no earlier than 2026-09-11 |
| 29 | 2.11 | **Phase 2 finalisation and submission** | 6d | 2026-10-06 A | 2026-10-13 A |  | 100% |  |
| 30 |  | Finalise architecture, UML, sequences and ERD with ROLE table | 1d | 2026-10-06 A | 2026-10-06 A | 28 | 100% |  |
| 31 |  | Finalise and review mobile and staff-portal prototype designs | 2d | 2026-10-07 A | 2026-10-08 A | 30 | 100% |  |
| 32 |  | Compile updated SRS and editable design links | 1d | 2026-10-09 A | 2026-10-09 A | 31 | 100% |  |
| 33 |  | Complete Phase 2 project plan and contribution tracker | 1d | 2026-10-09 A | 2026-10-09 A | 31 | 100% |  |
| 34 |  | Organise Phase 2 design evidence in shared repository | 1d | 2026-10-09 A | 2026-10-09 A | 31 | 100% |  |
| 35 |  | Complete group review and second-submission preparation | 1d | 2026-10-12 A | 2026-10-12 A | 32, 33, 34 | 100% |  |
| 36 |  | Second submission / Phase 2 complete - 13 October | 0d | 2026-10-13 A | 2026-10-13 A | 35 | 100% |  |
| 37 | 3 | **Phase 3 / Implementation, integration and final submission** | 14d | 2026-10-14 | 2026-11-02 |  |  |  |
| 38 | 3.1 | **Shared Supabase foundation** | 6d | 2026-10-14 | 2026-10-21 |  |  |  |
| 39 |  | Verify existing framework, shared environment and API contract | 0.5d | 2026-10-14 | 2026-10-14 | 36 |  | start no earlier than 2026-10-14 |
| 40 |  | Implement approved ERD, ROLE table, keys and relationships | 2d | 2026-10-14 | 2026-10-16 | 39 |  | start no earlier than 2026-10-14 |
| 41 |  | Implement authentication and authorised role access | 2d | 2026-10-16 | 2026-10-20 | 40 |  | start no earlier than 2026-10-16 |
| 42 |  | Configure document storage and controlled downloads | 1d | 2026-10-16 | 2026-10-19 | 40 |  | start no earlier than 2026-10-16 |
| 43 |  | Apply row access rules and grade audience permissions | 1d | 2026-10-19 | 2026-10-20 | 42 |  | start no earlier than 2026-10-19 |
| 44 |  | Configure notification records and delivery integration | 1d | 2026-10-19 | 2026-10-20 | 40 |  | start no earlier than 2026-10-19 |
| 45 |  | Seed fictional accounts, grades, notices and documents | 0.5d | 2026-10-20 | 2026-10-20 | 41, 43, 44 |  | start no earlier than 2026-10-20 |
| 46 |  | Verify shared backend access, CRUD and document retrieval | 1d | 2026-10-21 | 2026-10-21 | 45 |  | start no earlier than 2026-10-21 |
| 47 |  | Milestone: shared backend ready | 0d | 2026-10-21 | 2026-10-21 | 46 |  | start no earlier than 2026-10-21 |
| 48 | 3.2 | **Flutter parent application** | 7.5d | 2026-10-14 | 2026-10-23 |  |  |  |
| 49 |  | Verify Flutter framework and connect application configuration | 1d | 2026-10-14 | 2026-10-15 | 39 |  | start no earlier than 2026-10-14 |
| 50 |  | Build approved navigation, forms and validation | 2d | 2026-10-15 | 2026-10-19 | 49 |  | start no earlier than 2026-10-15 |
| 51 |  | Connect parent registration, login and session handling | 1d | 2026-10-20 | 2026-10-21 | 50, 41 |  | start no earlier than 2026-10-20 |
| 52 |  | Implement grade-filtered notice feed and detail views | 2d | 2026-10-22 | 2026-10-23 | 47, 51 |  | start no earlier than 2026-10-22 |
| 53 |  | Implement document viewing and download states | 1d | 2026-10-22 | 2026-10-22 | 47, 50 |  | start no earlier than 2026-10-22 |
| 54 |  | Connect parent notifications and navigation | 1d | 2026-10-22 | 2026-10-22 | 47, 44, 51 |  | start no earlier than 2026-10-22 |
| 55 |  | Milestone: parent core functions ready for integration | 0d | 2026-10-23 | 2026-10-23 | 52, 53, 54 |  | start no earlier than 2026-10-23 |
| 56 | 3.3 | **ASP.NET staff portal** | 7.5d | 2026-10-14 | 2026-10-23 |  |  |  |
| 57 |  | Verify ASP.NET framework and shared configuration | 1d | 2026-10-14 | 2026-10-15 | 39 |  | start no earlier than 2026-10-14 |
| 58 |  | Build approved staff forms, navigation and validation | 2d | 2026-10-15 | 2026-10-19 | 57 |  | start no earlier than 2026-10-15 |
| 59 |  | Connect staff login and protected navigation | 1d | 2026-10-20 | 2026-10-21 | 41, 58 |  | start no earlier than 2026-10-20 |
| 60 |  | Implement create, edit and remove announcement functions | 2d | 2026-10-22 | 2026-10-23 | 47, 59 |  | start no earlier than 2026-10-22 |
| 61 |  | Implement document upload and attachment management | 1d | 2026-10-22 | 2026-10-22 | 47, 58 |  | start no earlier than 2026-10-22 |
| 62 |  | Connect grade targeting, priority and notification triggers | 1d | 2026-10-22 | 2026-10-22 | 47, 59, 44 |  | start no earlier than 2026-10-22 |
| 63 |  | Milestone: staff core functions ready for integration | 0d | 2026-10-23 | 2026-10-23 | 60, 61, 62 |  | start no earlier than 2026-10-23 |
| 64 | 3.4 | **Shared processes, practical checks and corrections** | 4d | 2026-10-26 | 2026-10-29 |  |  |  |
| 65 |  | Integrate both clients with the same Supabase data | 1d | 2026-10-26 | 2026-10-26 | 55, 63 |  | start no earlier than 2026-10-26 |
| 66 |  | Demonstrate process 1: publish notice and view on mobile | 0.5d | 2026-10-27 | 2026-10-27 | 65 |  | start no earlier than 2026-10-27 |
| 67 |  | Demonstrate process 2: edit notice and refresh on mobile | 0.5d | 2026-10-27 | 2026-10-27 | 66 |  | start no earlier than 2026-10-27 |
| 68 |  | Check permissions, validation, failures and usability | 1d | 2026-10-27 | 2026-10-27 | 65 |  | start no earlier than 2026-10-27 |
| 69 |  | Review working prototype against SRS and stakeholder needs | 0.5d | 2026-10-28 | 2026-10-28 | 67, 68 |  | start no earlier than 2026-10-28 |
| 70 |  | Correct integration issues and acceptance gaps | 1d | 2026-10-28 | 2026-10-29 | 69 |  | start no earlier than 2026-10-28 |

| ID | WBS | Task | Duration | Start | Finish | Predecessors | Constraint |
| --- | --- | --- | --- | --- | --- | --- | --- |
| 71 |  | Capture final mobile, web and shared-process screenshots | 0.5d | 2026-10-29 | 2026-10-29 | 70 | start no earlier than 2026-10-29 |
| 72 |  | Recheck both shared processes and key permissions | 0.5d | 2026-10-29 | 2026-10-29 | 70 | start no earlier than 2026-10-29 |
| 73 |  | Milestone: working prototype checked and release frozen | 0d | 2026-10-29 | 2026-10-29 | 72, 71 | start no earlier than 2026-10-29 |
| 74 | 3.5 | **Submission evidence, rehearsal and hand-in** | 6d | 2026-10-26 | 2026-11-02 |  |  |
| 75 |  | Draft implementation section and requirements-status mapping | 2d | 2026-10-26 | 2026-10-27 | 47 | start no earlier than 2026-10-26 |
| 76 |  | Update repository README and backend setup scripts | 0.5d | 2026-10-28 | 2026-10-28 | 65 | start no earlier than 2026-10-28 |
| 77 |  | Prepare demonstration story and individual speaking roles | 0.5d | 2026-10-28 | 2026-10-28 | 67 | start no earlier than 2026-10-28 |
| 78 |  | Update original tracker, actual contributions and group reflection | 0.5d | 2026-10-29 | 2026-10-29 | 69 | start no earlier than 2026-10-29 |
| 79 |  | Update final Project progress and capture readable Gantt evidence | 0.5d | 2026-10-30 | 2026-10-30 | 73, 78 | start no earlier than 2026-10-30 |
| 80 |  | Package matching repository, source ZIP and demo release | 0.5d | 2026-10-30 | 2026-10-30 | 73, 76 | start no earlier than 2026-10-30 |
| 81 |  | Coordinator completes confidential individual contribution check | 0.25d | 2026-10-30 | 2026-10-30 | 73 | start no earlier than 2026-10-30 |
| 82 |  | Finalise one SRS PDF with evidence, links and limitations | 0.5d | 2026-10-30 | 2026-10-30 | 75, 71, 79, 80 | start no earlier than 2026-10-30 |
| 83 |  | Other seven members complete their individual contribution checks | 0.25d | 2026-10-30 | 2026-10-30 | 73 | start no earlier than 2026-10-30 |
| 84 |  | Milestone: complete submission pack ready | 0d | 2026-10-30 | 2026-10-30 | 82, 80, 79, 81, 83 | start no earlier than 2026-10-30 |
| 85 |  | Rehearse live integrated demonstration with all eight members | 0.5d | 2026-11-02 | 2026-11-02 | 84, 77 | start no earlier than 2026-11-02 |
| 86 |  | Check ZIP contents, links and matching release version | 0.25d | 2026-11-02 | 2026-11-02 | 85 | start no earlier than 2026-11-02 |
| 87 |  | Upload Group P Phase 3 submission and retain receipt | 0.25d | 2026-11-02 | 2026-11-02 | 86 | start no earlier than 2026-11-02 |
| 88 |  | FINAL DEADLINE / All group submission files handed in | 0d | 2026-11-02 | 2026-11-02 | 87 | start no earlier than 2026-11-02 |

## Version 2 (data date 2026-10-13, saved 2026-10-31, file Kagisho_MS_Project_Plan.mpp)

Last finish stays 2026-11-02. Complete tasks 33 → 31.

Added:

| ID | Task | Duration | Start | Finish | Constraint |
| --- | --- | --- | --- | --- | --- |
| 52 | Group Presentation | 0d | 2026-10-15 | 2026-10-15 | start no earlier than 2026-10-15 |

Changed:

| ID | Task | Finish | Duration | Complete | Total float |
| --- | --- | --- | --- | --- | --- |
| 1 | **Phase 1 / Requirements and feasibility - complete** | 2026-08-31 A → 2026-08-31 |  | 100% → 90% | none → 45d |
| 2 | Group kick-off and role allocation | 2026-08-18 A → 2026-08-18 |  | 100% → 0% | none → 54d |
| 3 | Select and document school communication project scope | 2026-08-18 A → 2026-08-18 |  | 100% → 0% | none → 54d |
| 48 | **Flutter parent application** |  | 7.5d → 8d |  | none → 0d |
| 49 | **ASP.NET staff portal** | 2026-10-23 → 2026-10-22 (-1d) | 7.5d → 7d |  |  |

## Version 3 (data date 2026-10-13, saved 2026-11-06, file Kagisho_MS_Project_Plan.mpp)

Last finish 2026-11-02 → 2026-11-05 (+3d). Complete tasks 31 → 81.

Added:

| ID | Task | Duration | Start | Finish |
| --- | --- | --- | --- | --- |
| 89 | Check if everyone has uploaded on github | 0d | 2026-11-05 A | 2026-11-05 A |

Changed:

| ID | Task | Start | Finish | Duration | Complete | Total float |
| --- | --- | --- | --- | --- | --- | --- |
| 1 | **Phase 1 / Requirements and feasibility - complete** |  | 2026-08-31 A |  | 90% → 100% | 45d → none |
| 2 | Group kick-off and role allocation |  | 2026-08-18 A |  | 0% → 100% | 54d → none |
| 3 | Select and document school communication project scope |  | 2026-08-18 A |  | 0% → 100% | 54d → none |
| 37 | **Phase 3 / Implementation, integration and final submission** | 2026-10-14 A | 2026-11-02 → 2026-11-05 A (+3d) | 14d → 16d | 0% → 100% | 0d → none |
| 38 | **Shared Supabase foundation** | 2026-10-14 A | 2026-10-21 A |  | 0% → 100% | 0d → none |
| 39 | Verify existing framework, shared environment and API contract | 2026-10-14 A | 2026-10-14 A |  | 0% → 100% | 0d → none |
| 40 | Implement approved ERD, ROLE table, keys and relationships | 2026-10-14 A | 2026-10-16 A |  | 0% → 100% | 0d → none |
| 41 | Implement authentication and authorised role access | 2026-10-16 A | 2026-10-20 A |  | 0% → 100% | 0d → none |
| 42 | Configure document storage and controlled downloads | 2026-10-16 A | 2026-10-19 A |  | 0% → 100% | 0d → none |
| 43 | Apply row access rules and grade audience permissions | 2026-10-19 A | 2026-10-20 A |  | 0% → 100% | 0d → none |
| 44 | Configure notification records and delivery integration | 2026-10-19 A | 2026-10-20 A |  | 0% → 100% | 0d → none |
| 45 | Seed fictional accounts, grades, notices and documents | 2026-10-20 A | 2026-10-20 A |  | 0% → 100% | 0d → none |
| 46 | Verify shared backend access, CRUD and document retrieval | 2026-10-21 A | 2026-10-21 A |  | 0% → 100% | 0d → none |
| 47 | Milestone: shared backend ready | 2026-10-21 A | 2026-10-21 A |  | 0% → 100% | 0d → none |
| 48 | **Flutter parent application** | 2026-10-14 A | 2026-10-23 A |  | 0% → 100% | 0d → none |
| 49 | **ASP.NET staff portal** | 2026-10-14 A |  |  | 0% → 100% |  |
| 50 | Verify Flutter framework and connect application configuration | 2026-10-14 A | 2026-10-15 A |  | 0% → 100% | 1.5d → none |
| 51 | Verify ASP.NET framework and shared configuration | 2026-10-14 A | 2026-10-15 A |  | 0% → 100% | 1.5d → none |
| 52 | Group Presentation | 2026-10-15 A | 2026-10-15 A |  | 0% → 100% | 13d → none |
| 53 | Build approved navigation, forms and validation | 2026-10-15 A | 2026-10-19 A |  | 0% → 100% | 1.5d → none |
| 54 | Build approved staff forms, navigation and validation | 2026-10-15 A | 2026-10-19 A |  | 0% → 100% | 1.5d → none |
| 55 | Connect staff login and protected navigation | 2026-10-20 A | 2026-10-21 A |  | 0% → 100% | 0.5d → none |
| 56 | Connect parent registration, login and session handling | 2026-10-20 A | 2026-10-21 A |  | 0% → 100% | 0.5d → none |
| 57 | Implement create, edit and remove announcement functions | 2026-10-22 A | 2026-10-23 A |  | 0% → 100% | 0d → none |
| 58 | Implement document upload and attachment management | 2026-10-22 A | 2026-10-22 A |  | 0% → 100% | 1d → none |
| 59 | Connect grade targeting, priority and notification triggers | 2026-10-22 A | 2026-10-22 A |  | 0% → 100% | 1d → none |
| 60 | Implement grade-filtered notice feed and detail views | 2026-10-22 A | 2026-10-23 A |  | 0% → 100% | 0d → none |
| 61 | Implement document viewing and download states | 2026-10-22 A | 2026-10-22 A |  | 0% → 100% | 1d → none |
| 62 | Connect parent notifications and navigation | 2026-10-22 A | 2026-10-22 A |  | 0% → 100% | 1d → none |
| 63 | Milestone: staff core functions ready for integration | 2026-10-23 A | 2026-10-23 A |  | 0% → 100% | 0d → none |
| 64 | Milestone: parent core functions ready for integration | 2026-10-23 A | 2026-10-23 A |  | 0% → 100% | 0d → none |
| 65 | **Shared processes, practical checks and corrections** | 2026-10-26 A | 2026-10-29 A |  | 0% → 100% | 0d → none |
| 66 | Integrate both clients with the same Supabase data | 2026-10-26 A | 2026-10-26 A |  | 0% → 100% | 0d → none |
| 67 | Demonstrate process 1: publish notice and view on mobile | 2026-10-27 A | 2026-10-27 A |  | 0% → 100% | 0d → none |
| 68 | Demonstrate process 2: edit notice and refresh on mobile | 2026-10-27 A | 2026-10-27 A |  | 0% → 100% | 0d → none |
| 69 | Check permissions, validation, failures and usability | 2026-10-27 A | 2026-10-27 A |  | 0% → 100% | 0d → none |
| 70 | Review working prototype against SRS and stakeholder needs | 2026-10-28 A | 2026-10-28 A |  | 0% → 100% | 0d → none |
| 71 | Correct integration issues and acceptance gaps | 2026-10-28 A | 2026-10-29 A |  | 0% → 100% | 0d → none |
| 72 | Capture final mobile, web and shared-process screenshots | 2026-10-29 A | 2026-10-29 A |  | 0% → 100% | 0d → none |
| 73 | Recheck both shared processes and key permissions | 2026-10-29 A | 2026-10-29 A |  | 0% → 100% | 0d → none |
| 74 | Milestone: working prototype checked and release frozen | 2026-10-29 A | 2026-10-29 A |  | 0% → 100% | 0d → none |
| 75 | **Submission evidence, rehearsal and hand-in** | 2026-10-26 A | 2026-11-02 → 2026-11-05 A (+3d) | 6d → 8d | 0% → 100% | 0d → none |
| 76 | Draft implementation section and requirements-status mapping | 2026-10-26 A | 2026-10-27 A |  | 0% → 100% | 2.5d → none |
| 77 | Update repository README and backend setup scripts | 2026-10-28 A | 2026-10-28 A |  | 0% → 100% | 1.5d → none |
| 78 | Prepare demonstration story and individual speaking roles | 2026-10-28 A | 2026-10-28 A |  | 0% → 100% | 2.5d → none |
| 79 | Update original tracker, actual contributions and group reflection | 2026-10-29 A | 2026-10-29 A |  | 0% → 100% | 0.5d → none |
| 80 | Update final Project progress and capture readable Gantt evidence | 2026-10-30 A | 2026-10-30 A |  | 0% → 100% | 0d → none |
| 81 | Package matching repository, source ZIP and demo release | 2026-10-30 A | 2026-10-30 A |  | 0% → 100% | 0d → none |
| 82 | Coordinator completes confidential individual contribution check | 2026-10-30 A | 2026-10-30 A |  | 0% → 100% | 0.5d → none |
| 83 | Finalise one SRS PDF with evidence, links and limitations | 2026-10-30 A | 2026-10-30 A |  | 0% → 100% | 0d → none |
| 84 | Other seven members complete their individual contribution checks | 2026-10-30 A | 2026-10-30 A |  | 0% → 100% | 0.25d → none |
| 85 | Milestone: complete submission pack ready | 2026-10-30 A | 2026-10-30 A |  | 0% → 100% | 0d → none |
| 86 | Rehearse live integrated demonstration with all eight members | 2026-11-02 A | 2026-11-02 A |  | 0% → 100% | 0d → none |
| 87 | Check ZIP contents, links and matching release version | 2026-11-02 A | 2026-11-02 A |  | 0% → 100% | 0d → none |
| 88 | Upload Group P Phase 3 submission and retain receipt | 2026-11-02 → 2026-11-04 A (+2d) | 2026-11-02 → 2026-11-04 A (+2d) | 0.25d → 1d | 0% → 100% | 0d → none |
| 90 | FINAL DEADLINE / All group submission files handed in | 2026-11-02 A | 2026-11-02 A |  | 0% → 100% | 0d → none |
